# Cronograma de actividades del proyecto (Diagrama de Gantt)

Schedule from MS Project XML, 2026-02-09 to 2026-11-27.

## Calendars

- Estándar: Mon-Fri 08:00-12:00, 13:00-17:00; Sat-Sun off.

## Resources

| Resource |
| --- |
| Samuel Loyo |
| Anthony Escobar |
| Gabriel Aguilar |
| Rosmel Briceño |
| Equipo de Proyecto |

## Schedule

| ID | WBS | Task | Type | Duration | Start | Finish | Predecessors | Resources | Work |
| --- | --- | --- | --- | --- | --- | --- | --- | --- | --- |
| 1 | 1 | **Meta del Proyecto** |  | 210d | 2026-02-09 | 2026-11-27 |  |  | 2848h |
| 2 | 1.1 | **I: Análisis (RUP: Inicio)** |  | 15d | 2026-02-09 | 2026-02-27 |  |  | 224h |
| 3 | 1.1.1 | **1.1 Análisis de requerimientos** |  | 15d | 2026-02-09 | 2026-02-27 |  |  | 224h |
| 4 | 1.1.1.1 | 1.1.1 Diagnóstico de la comunidad y levantamiento de información |  | 7d | 2026-02-09 | 2026-02-17 |  | Anthony Escobar; Gabriel Aguilar; Rosmel Briceño | 168h |
| 5 | 1.1.1.2 | 1.1.2 Definición de requerimientos |  | 7d | 2026-02-19 | 2026-02-27 | 4FS+1d | Samuel Loyo | 56h |
| 6 | 1.1.1.3 | Hito 1: Requerimientos definidos | milestone | 0d | 2026-02-27 | 2026-02-27 | 5 |  |  |
| 7 | 1.2 | **II: Factibilidad (RUP: Inicio)** |  | 5d | 2026-03-02 | 2026-03-06 |  |  | 104h |
| 8 | 1.2.1 | **2.1 Estudio de factibilidad** |  | 5d | 2026-03-02 | 2026-03-06 |  |  | 104h |
| 9 | 1.2.1.1 | 2.1.1 Factibilidad técnica |  | 3d | 2026-03-02 | 2026-03-04 | 6 | Anthony Escobar | 24h |
| 10 | 1.2.1.2 | 2.1.2 Factibilidad económica |  | 3d | 2026-03-02 | 2026-03-04 | 9SS | Gabriel Aguilar | 24h |
| 11 | 1.2.1.3 | 2.1.3 Factibilidad operativa |  | 3d | 2026-03-02 | 2026-03-04 | 10SS | Rosmel Briceño | 24h |
| 12 | 1.2.1.4 | 2.1.4 Análisis de riesgos y alternativas |  | 1d | 2026-03-05 | 2026-03-05 | 11 | Anthony Escobar; Gabriel Aguilar | 16h |
| 13 | 1.2.1.5 | 2.1.5 Informe y conclusiones de factibilidad |  | 1d | 2026-03-06 | 2026-03-06 | 12 | Anthony Escobar; Gabriel Aguilar | 16h |
| 14 | 1.2.1.6 | Hito 2: Factibilidad aprobada | milestone | 0d | 2026-03-06 | 2026-03-06 | 13 |  |  |
| 15 | 1.3 | **III: Diseño y modelado (RUP: Elaboración)** |  | 30d | 2026-03-09 | 2026-04-17 |  |  | 240h |
| 16 | 1.3.1 | **3.1 Modelado del sistema** |  | 20d | 2026-03-09 | 2026-04-03 |  |  | 160h |
| 17 | 1.3.1.1 | 3.1.1 Casos de uso |  | 10d | 2026-03-09 | 2026-03-20 | 14 | Samuel Loyo | 80h |
| 18 | 1.3.1.2 | 3.1.2 Modelo de datos |  | 10d | 2026-03-23 | 2026-04-03 | 17 | Samuel Loyo | 80h |
| 19 | 1.3.2 | **3.2 Diseño de interfaz** |  | 10d | 2026-04-06 | 2026-04-17 |  |  | 80h |
| 20 | 1.3.2.1 | 3.2.1 Diseño lógico |  | 10d | 2026-04-06 | 2026-04-17 | 18 | Samuel Loyo | 80h |
| 21 | 1.3.2.2 | Hito 3: Diseño del sistema aprobado | milestone | 0d | 2026-04-17 | 2026-04-17 | 20 |  |  |
| 22 | 1.4 | **IV: Desarrollo e implementación (RUP: Construcción)** |  | 108d | 2026-04-20 | 2026-09-16 |  |  | 1720h |
| 23 | 1.4.1 | **4.1 Configuración del entorno** |  | 15d | 2026-04-20 | 2026-05-08 |  |  | 120h |
| 24 | 1.4.1.1 | 4.1.1 Configuración del entorno de desarrollo |  | 5d | 2026-04-20 | 2026-04-24 | 21 | Samuel Loyo | 40h |
| 25 | 1.4.1.2 | 4.1.2 Módulo de inicio de sesión |  | 10d | 2026-04-27 | 2026-05-08 | 24 | Samuel Loyo | 80h |
| 26 | 1.4.1.3 | Hito 4: Entorno de desarrollo y módulo de acceso listos | milestone | 0d | 2026-05-08 | 2026-05-08 | 25 |  |  |

| ID | WBS | Task | Type | Duration | Start | Finish | Predecessors | Constraint | Resources | Work |
| --- | --- | --- | --- | --- | --- | --- | --- | --- | --- | --- |
| 27 | 1.4.2 | **4.2 Módulos del sistema** |  | 93d | 2026-05-11 | 2026-09-16 |  |  |  | 1600h |
| 28 | 1.4.2.1 | 4.2.1 Módulo de marcación |  | 20d | 2026-05-11 | 2026-06-05 | 26 |  | Samuel Loyo | 160h |
| 29 | 1.4.2.2 | 4.2.2 Módulo de empleados |  | 20d | 2026-06-08 | 2026-07-03 | 28 |  | Samuel Loyo | 160h |
| 30 | 1.4.2.3 | 4.2.3 Módulo de asistencia |  | 30d | 2026-07-06 | 2026-08-14 | 29 |  | Rosmel Briceño | 240h |
| 31 | 1.4.2.4 | 4.2.4 Módulo de pagos |  | 57d | 2026-05-11 | 2026-07-28 |  | start no earlier than 2026-05-11 | Gabriel Aguilar | 456h |
| 32 | 1.4.2.5 | 4.2.5 Módulo de conceptos |  | 25d | 2026-05-11 | 2026-06-12 |  | start no earlier than 2026-05-11 | Anthony Escobar | 200h |
| 33 | 1.4.2.6 | 4.2.6 Módulo de liquidaciones |  | 25d | 2026-06-15 | 2026-07-17 | 32 |  | Anthony Escobar | 200h |
| 34 | 1.4.2.7 | 4.2.7 Módulo de reportes |  | 23d | 2026-08-17 | 2026-09-16 | 30, 31, 33 |  | Gabriel Aguilar | 184h |
| 35 | 1.5 | **V: Pruebas, instalación e implantación y evaluación (RUP: Transición)** |  | 63d | 2026-09-02 | 2026-11-27 |  |  |  | 560h |
| 36 | 1.5.1 | **5.1 Pruebas** |  | 20d | 2026-09-02 | 2026-09-29 |  |  |  | 160h |
| 37 | 1.5.1.1 | 5.1.1 Pruebas unitarias |  | 20d | 2026-09-02 | 2026-09-29 | 34SS+12d |  | Samuel Loyo | 160h |
| 38 | 1.5.1.2 | Hito 5: Pruebas unitarias aprobadas | milestone | 0d | 2026-09-29 | 2026-09-29 | 37 |  |  |  |
| 39 | 1.5.2 | **5.2 Instalación** |  | 17d | 2026-10-01 | 2026-10-23 |  |  |  | 136h |
| 40 | 1.5.2.1 | 5.2.1 Preparación y verificación |  | 3d | 2026-10-01 | 2026-10-05 | 38FS+1d |  | Samuel Loyo | 24h |
| 41 | 1.5.2.2 | 5.2.2 Instalación de software base |  | 2d | 2026-10-06 | 2026-10-07 | 40 |  | Samuel Loyo | 16h |
| 42 | 1.5.2.3 | 5.2.3 Despliegue del sistema |  | 4d | 2026-10-08 | 2026-10-13 | 41 |  | Samuel Loyo | 32h |
| 43 | 1.5.2.4 | 5.2.4 Pruebas de configuración de la instalación |  | 8d | 2026-10-14 | 2026-10-23 | 42 |  | Samuel Loyo | 64h |
| 44 | 1.5.2.5 | Hito 6: Sistema instalado | milestone | 0d | 2026-10-23 | 2026-10-23 | 43 |  |  |  |
| 45 | 1.5.3 | **5.3 Implantación, aceptación y capacitación** |  | 23d | 2026-10-26 | 2026-11-25 |  |  |  | 248h |
| 46 | 1.5.3.1 | 5.3.1 Preparación del proyecto |  | 1d | 2026-10-26 | 2026-10-26 | 44 |  | Samuel Loyo | 8h |
| 47 | 1.5.3.2 | 5.3.2 Acondicionamiento de instalaciones |  | 3d | 2026-10-27 | 2026-10-29 | 46 |  | Samuel Loyo | 24h |
| 48 | 1.5.3.3 | 5.3.3 Pruebas |  | 5d | 2026-10-27 | 2026-11-02 | 47SS |  | Samuel Loyo | 40h |
| 49 | 1.5.3.4 | 5.3.4 Capacitación del personal |  | 5d | 2026-10-27 | 2026-11-02 | 48SS |  | Samuel Loyo | 40h |
| 50 | 1.5.3.5 | Hito 7: Pruebas y capacitación completadas | milestone | 0d | 2026-11-02 | 2026-11-02 | 49 |  |  |  |

| ID | WBS | Task | Type | Duration | Start | Finish | Predecessors | Resources | Work |
| --- | --- | --- | --- | --- | --- | --- | --- | --- | --- |
| 51 | 1.5.3.6 | **5.3.5 Puesta en marcha** |  | 17d | 2026-11-03 | 2026-11-25 |  |  | 136h |
| 52 | 1.5.3.6.1 | 5.3.5.1 Operación paralela del sistema con el sistema manual (15 días) |  | 15d | 2026-11-03 | 2026-11-23 | 50 | Samuel Loyo | 120h |
| 53 | 1.5.3.6.2 | 5.3.5.2 Análisis de resultados y corrección de errores |  | 1d | 2026-11-24 | 2026-11-24 | 52 | Samuel Loyo | 8h |
| 54 | 1.5.3.6.3 | 5.3.5.3 Arranque del sistema |  | 1d | 2026-11-25 | 2026-11-25 | 53 | Samuel Loyo | 8h |
| 55 | 1.5.3.6.4 | Hito 8: Sistema en producción | milestone | 0d | 2026-11-25 | 2026-11-25 | 54 |  |  |
| 56 | 1.5.4 | **5.4 Evaluación** |  | 2d | 2026-11-26 | 2026-11-27 |  |  | 16h |
| 57 | 1.5.4.1 | 5.4.1 Evaluación |  | 2d | 2026-11-26 | 2026-11-27 | 55 | Samuel Loyo | 16h |
| 58 | 1.5.4.2 | Hito 9: Fin del proyecto | milestone | 0d | 2026-11-27 | 2026-11-27 | 57 |  |  |
